# ARKartSmart

Schedule from MS Project, 2015-11-02 to 2016-08-09, costs in $.

## Calendars

- Standard: Mon-Fri 08:00-12:00, 13:00-17:00; Sat-Sun off.

## Resources

| Resource | Rate |
| --- | --- |
| Project Manager | 150 |
| Senior Software Engineer | 150 |
| Installation Support | 75 |
| Network Engineer | 150 |
| Systems Administrator | 150 |
| Software Team | 450 |

## Schedule

| ID | WBS | Task | Duration | Start | Finish | Predecessors | Total slack | Free slack | Resources | Work | Cost |
| --- | --- | --- | --- | --- | --- | --- | --- | --- | --- | --- | --- |
| 1 | 1 | **ARKartSmart Project Deployment** | 201d | 2015-11-02 | 2016-08-09 |  | 0d |  |  | 3294h | 563,400 |
| 2 | 1.1 | **Hardware, etc** | 201d | 2015-11-02 | 2016-08-09 |  | 0d |  |  | 1742h | 207,000 |
| 3 | 1.1.1 | **Tablets** | 97d | 2015-11-02 | 2016-03-16 |  | 92.5d |  |  | 776h | 64,800 |
| 4 | 1.1.1.1 | Order Nexus 9 Tablets | 8h | 2015-11-02 | 2015-11-03 |  | 92.5d | 0d | Project Manager | 8h | 1,200 |
| 5 | 1.1.1.2 | Install Custom ROM | 40h | 2015-11-03 | 2015-11-10 | 4 | 92.5d | 0d | Senior Software Engineer | 40h | 6,000 |
| 6 | 1.1.1.3 | Inspect & Test | 40h | 2015-11-10 | 2015-11-17 | 5 | 92.5d | 0d | Installation Support | 40h | 3,000 |
| 7 | 1.1.1.4 | Test Network Connectivity | 20h | 2015-11-17 | 2015-11-19 | 6, 17 | 92.5d | 0d | Network Engineer | 20h | 3,000 |
| 8 | 1.1.1.5 | Integrate with ARKSmart Network | 20h | 2015-11-20 | 2015-11-24 | 7 | 92.5d | 0d | Network Engineer | 20h | 3,000 |
| 9 | 1.1.1.6 | Mount on Carts | 648h | 2015-11-24 | 2016-03-16 | 27, 8 | 92.5d |  | Installation Support | 648h | 48,600 |
| 10 | 1.1.2 | **Servers** | 7.5d | 2015-11-02 | 2015-11-11 |  | 96d | 0d |  | 68h | 10,200 |
| 11 | 1.1.2.1 | Purchase HQ Hardware | 8h | 2015-11-02 | 2015-11-03 |  | 96d | 0d | Project Manager | 8h | 1,200 |
| 12 | 1.1.2.2 | Purchase Store Hardware | 8h | 2015-11-02 | 2015-11-03 |  | 96d | 0d | Project Manager | 8h | 1,200 |
| 13 | 1.1.2.3 | Rack Mount Hardware | 12h | 2015-11-03 | 2015-11-04 | 11, 12 | 96d | 0d | Systems Administrator | 12h | 1,800 |
| 14 | 1.1.2.4 | Install OS | 12h | 2015-11-05 | 2015-11-06 | 13 | 96d | 0d | Systems Administrator | 12h | 1,800 |
| 15 | 1.1.2.5 | Patch OS | 12h | 2015-11-06 | 2015-11-09 | 14 | 96d | 0d | Systems Administrator | 12h | 1,800 |
| 16 | 1.1.2.6 | Configure Rack Mounted Networking | 8h | 2015-11-10 | 2015-11-10 | 15 | 96d | 0d | Network Engineer | 8h | 1,200 |
| 17 | 1.1.2.7 | Test Rack Mounted Network Connectivity | 8h | 2015-11-11 | 2015-11-11 | 16 | 96d | 3.5d | Network Engineer | 8h | 1,200 |
| 18 | 1.1.3 | **Barcode Scanners** | 35d | 2015-11-02 | 2015-12-21 |  | 154.5d |  |  | 248h | 19,200 |
| 19 | 1.1.3.1 | Purchase | 8h | 2015-11-02 | 2015-11-03 |  | 158.5d | 0d | Project Manager | 8h | 1,200 |
| 20 | 1.1.3.2 | Inspect & Test | 40h | 2015-11-03 | 2015-11-10 | 19 | 158.5d | 4d | Installation Support | 40h | 3,000 |
| 21 | 1.1.3.3 | Mount on Carts | 200h | 2015-11-16 | 2015-12-21 | 27, 20 | 154.5d |  | Installation Support | 200h | 15,000 |
| 22 | 1.1.4 | **Charging Stations** | 12.5d | 2015-11-02 | 2015-11-18 |  | 188.5d |  |  | 100h | 8,100 |
| 23 | 1.1.4.1 | Purchase | 8h | 2015-11-02 | 2015-11-03 |  | 188.5d | 0d | Project Manager | 8h | 1,200 |
| 24 | 1.1.4.2 | Assemble | 40h | 2015-11-03 | 2015-11-10 | 23 | 188.5d | 0d | Installation Support | 40h | 3,000 |
| 25 | 1.1.4.3 | Install | 40h | 2015-11-10 | 2015-11-17 | 24 | 188.5d | 0d | Installation Support | 40h | 3,000 |
| 26 | 1.1.4.4 | Test | 12h | 2015-11-17 | 2015-11-18 | 25 | 188.5d |  | Installation Support | 12h | 900 |

| ID | WBS | Task | Duration | Start | Finish | Predecessors | Total slack | Free slack | Resources | Work | Cost |
| --- | --- | --- | --- | --- | --- | --- | --- | --- | --- | --- | --- |
| 27 | 1.1.5 | **Cart Mounting** | 10d | 2015-11-02 | 2015-11-16 |  | 98.5d | 0d |  | 80h | 6,600 |
| 28 | 1.1.5.1 | Purchase Hardware | 8h | 2015-11-02 | 2015-11-03 |  | 98.5d | 0d | Project Manager | 8h | 1,200 |
| 29 | 1.1.5.2 | Inspect Hardware | 72h | 2015-11-03 | 2015-11-16 | 28 | 98.5d |  | Installation Support | 72h | 5,400 |
| 30 | 1.1.6 | **ARKSMart Employee Training** | 11.5d | 2016-07-25 | 2016-08-09 | 86 | 0d |  |  | 102h | 45,900 |
| 31 | 1.1.6.1 | Tablet & Barcode Scanner Operation | 72h | 2016-07-25 | 2016-08-04 | 3, 18 | 0d |  | Software Team | 72h | 32,400 |
| 32 | 1.1.6.2 | Tablet Repair/Replacement | 20h | 2016-08-05 | 2016-08-09 | 3, 31 | 0d |  | Software Team | 20h | 9,000 |
| 33 | 1.1.6.3 | Barcode Scanner Replacement | 10h | 2016-08-05 | 2016-08-08 | 18, 31 | 1.25d |  | Software Team | 10h | 4,500 |
| 34 | 1.1.7 | **Branding** | 36d | 2015-11-02 | 2015-12-22 |  | 165d |  |  | 288h | 28,200 |
| 35 | 1.1.7.1 | Tablet Branding Design | 80h | 2015-11-02 | 2015-11-16 |  | 165d | 0d | Senior Software Engineer | 80h | 12,000 |
| 36 | 1.1.7.2 | Order/Purchase Branding for Tablets | 8h | 2015-11-16 | 2015-11-17 | 35 | 165d | 0d | Project Manager | 8h | 1,200 |
| 37 | 1.1.7.3 | Install Tablet Branding | 200h | 2015-11-17 | 2015-12-22 | 6, 36 | 165d |  | Installation Support | 200h | 15,000 |
| 38 | 1.1.8 | **Documentation** | 157.5d | 2015-11-12 | 2016-06-20 |  | 36d |  |  | 80h | 24,000 |
| 39 | 1.1.8.1 | ARKSmart Network Configuration | 40h | 2015-11-12 | 2015-11-18 | 10 | 188.5d |  | Network Engineer | 40h | 6,000 |
| 40 | 1.1.8.2 | Software User Guide | 40h | 2016-06-13 | 2016-06-20 | 70 | 36d |  | Software Team | 40h | 18,000 |
| 41 | 1.2 | **Software** | 189.5d | 2015-11-02 | 2016-07-22 |  | 0d |  |  | 1552h | 356,400 |
| 42 | 1.2.1 | **Agile Sprint 1 - Software Requirements** | 2.5d | 2015-11-02 | 2015-11-04 |  | 0d |  |  | 20h | 4,200 |
| 43 | 1.2.1.1 | Develop Software Requirements | 16h | 2015-11-02 | 2015-11-04 |  | 0d |  | Senior Software Engineer | 16h | 2,400 |
| 44 | 1.2.1.2 | Work Product Inspection (WPI) - Software Requirements Review | 4h | 2015-11-04 | 2015-11-04 | 43 | 0d |  | Software Team | 4h | 1,800 |
| 45 | 1.2.2 | **Agile Sprint 2 - Software Architecture/Design** | 6d | 2015-11-05 | 2015-11-12 | 42 | 0d |  |  | 68h | 12,600 |
| 46 | 1.2.2.1 | Develop/Customize Architecture/Design | 40h | 2015-11-05 | 2015-11-11 |  | 0d |  | Senior Software Engineer | 40h | 6,000 |
| 47 | 1.2.2.2 | WPI - Software Design Review | 8h | 2015-11-12 | 2015-11-12 | 46 | 0d |  | Software Team | 8h | 3,600 |
| 48 | 1.2.2.3 | COTS Selection/Approval | 20h | 2015-11-05 | 2015-11-09 |  | 3.5d |  | Senior Software Engineer | 20h | 3,000 |
| 49 | 1.2.3 | **Agile Sprint 3 - Software Environment** | 2.5d | 2015-11-13 | 2015-11-17 | 45 | 0d |  |  | 36h | 16,200 |
| 50 | 1.2.3.1 | Software Lab Environment Setup | 16h | 2015-11-13 | 2015-11-16 |  | 0d |  | Software Team | 16h | 7,200 |
| 51 | 1.2.3.2 | Software Lab Environment Validation | 4h | 2015-11-17 | 2015-11-17 | 50 | 0d |  | Software Team | 4h | 1,800 |
| 52 | 1.2.3.3 | Test Tool Selection/Approval/Development | 16h | 2015-11-13 | 2015-11-16 |  | 0.5d |  | Software Team | 16h | 7,200 |

| ID | WBS | Task | Duration | Start | Finish | Predecessors | Total slack | Resources | Work | Cost |
| --- | --- | --- | --- | --- | --- | --- | --- | --- | --- | --- |
| 53 | 1.2.4 | **Agile Sprint 4 - Inventory System** | 44.5d | 2015-11-17 | 2016-01-18 | 49 | 0d |  | 356h | 61,800 |
| 54 | 1.2.4.1 | Inventory System Integration Development | 280h | 2015-11-17 | 2016-01-05 |  | 0d | Senior Software Engineer | 280h | 42,000 |
| 55 | 1.2.4.2 | **Testing** | 9d | 2016-01-05 | 2016-01-18 | 54 | 0d |  | 72h | 18,000 |
| 56 | 1.2.4.2.1 | Unit Level Testing | 48h | 2016-01-05 | 2016-01-13 |  | 0d | Senior Software Engineer | 48h | 7,200 |
| 57 | 1.2.4.2.2 | Component Level Testing | 24h | 2016-01-13 | 2016-01-18 | 56 | 0d | Software Team | 24h | 10,800 |
| 58 | 1.2.4.3 | WPI & Demo | 4h | 2016-01-18 | 2016-01-18 | 55 | 0d | Software Team | 4h | 1,800 |
| 59 | 1.2.5 | **Agile Sprint 5 - Customer Loyalty** | 44.5d | 2016-01-19 | 2016-03-21 | 53 | 0d |  | 356h | 61,800 |
| 60 | 1.2.5.1 | Customer Loyalty System Integration Development | 280h | 2016-01-19 | 2016-03-07 |  | 0d | Senior Software Engineer | 280h | 42,000 |
| 61 | 1.2.5.2 | **Testing** | 9d | 2016-03-08 | 2016-03-18 | 60 | 0d |  | 72h | 18,000 |
| 62 | 1.2.5.2.1 | Unit Level Testing | 48h | 2016-03-08 | 2016-03-15 |  | 0d | Senior Software Engineer | 48h | 7,200 |
| 63 | 1.2.5.2.2 | Component Level Testing | 24h | 2016-03-16 | 2016-03-18 | 62 | 0d | Software Team | 24h | 10,800 |
| 64 | 1.2.5.3 | WPI & Demo | 4h | 2016-03-21 | 2016-03-21 | 61 | 0d | Software Team | 4h | 1,800 |
| 65 | 1.2.6 | **Agile Sprint 6 - Integration/Test** | 10.5d | 2016-03-21 | 2016-04-04 | 59 | 0d |  | 84h | 37,800 |
| 66 | 1.2.6.1 | **System Level Integration Testing** | 10d | 2016-03-21 | 2016-04-04 |  | 0d |  | 80h | 36,000 |
| 67 | 1.2.6.1.1 | Customer Loyalty System Integration Testing | 40h | 2016-03-21 | 2016-03-28 |  | 0d | Software Team | 40h | 18,000 |
| 68 | 1.2.6.1.2 | Inventory System Integration Testing | 40h | 2016-03-28 | 2016-04-04 | 67 | 0d | Software Team | 40h | 18,000 |
| 69 | 1.2.6.2 | WPI & Demo | 4h | 2016-04-04 | 2016-04-04 | 66 | 0d | Software Team | 4h | 1,800 |
| 70 | 1.2.7 | **Agile Sprint 7 - OCF Smart Cart Software** | 49.5d | 2016-04-05 | 2016-06-13 | 65 | 0d |  | 396h | 67,800 |
| 71 | 1.2.7.1 | OCF Smart Cart System Integration Development | 280h | 2016-04-05 | 2016-05-23 |  | 0d | Senior Software Engineer | 280h | 42,000 |
| 72 | 1.2.7.2 | Software Customization | 40h | 2016-05-24 | 2016-05-30 | 71 | 0d | Senior Software Engineer | 40h | 6,000 |
| 73 | 1.2.7.3 | **Testing** | 9d | 2016-05-31 | 2016-06-10 | 72 | 0d |  | 72h | 18,000 |
| 74 | 1.2.7.3.1 | Unit Level Testing | 48h | 2016-05-31 | 2016-06-07 |  | 0d | Senior Software Engineer | 48h | 7,200 |
| 75 | 1.2.7.3.2 | Component Level Testing | 24h | 2016-06-08 | 2016-06-10 | 74 | 0d | Software Team | 24h | 10,800 |
| 76 | 1.2.7.4 | WPI & Demo | 4h | 2016-06-13 | 2016-06-13 | 73 | 0d | Software Team | 4h | 1,800 |

| ID | WBS | Task | Duration | Start | Finish | Predecessors | Total slack | Resources | Work | Cost |
| --- | --- | --- | --- | --- | --- | --- | --- | --- | --- | --- |
| 77 | 1.2.8 | **Agile Sprint 8 - OCF Integration/Test** | 5.5d | 2016-06-13 | 2016-06-20 | 70 | 0d |  | 44h | 7,800 |
| 78 | 1.2.8.1 | **System Level Integration Testing** | 5d | 2016-06-13 | 2016-06-20 |  | 0d |  | 40h | 6,000 |
| 79 | 1.2.8.1.1 | OCF Smart Cart System Integration Testing | 40h | 2016-06-13 | 2016-06-20 |  | 0d | Senior Software Engineer | 40h | 6,000 |
| 80 | 1.2.8.2 | WPI & Demo | 4h | 2016-06-20 | 2016-06-20 | 78 | 0d | Software Team | 4h | 1,800 |
| 81 | 1.2.9 | **Agile Sprint 9 - Software Installation** | 14d | 2016-06-21 | 2016-07-08 | 77 | 0d |  | 112h | 50,400 |
| 82 | 1.2.9.1 | Install Customer Loyalty System Integration Software | 40h | 2016-06-21 | 2016-06-27 |  | 0d | Software Team | 40h | 18,000 |
| 83 | 1.2.9.2 | Install Inventory System Integration Software | 40h | 2016-06-28 | 2016-07-04 | 82 | 0d | Software Team | 40h | 18,000 |
| 84 | 1.2.9.3 | Install OCF Smart Cart Softtware | 24h | 2016-07-05 | 2016-07-07 | 83 | 0d | Software Team | 24h | 10,800 |
| 85 | 1.2.9.4 | WPI & Demo | 8h | 2016-07-08 | 2016-07-08 | 84 | 0d | Software Team | 8h | 3,600 |
| 86 | 1.2.10 | Acceptance Testing | 80h | 2016-07-11 | 2016-07-22 | 81 | 0d | Software Team | 80h | 36,000 |
